Schedule from MS Project, 2018-09-19 to 2019-01-13, status date 2018-10-10, 2 hours a day, A marks actual dates.

## Calendars

- 七天工作日: Mon 20:00-22:00; Tue-Wed 20:00-23:00; Thu 08:00-12:00, 13:00-17:00; Fri 20:00-22:00; Sat-Sun 13:00-16:00, 18:00-20:00. Exceptions (off unless hours are given): 2018-09-22 to 2018-09-24 (中秋), 2018-10-02 to 2018-10-07 (国庆), 2018-10-10 to 2019-01-12 17:00-19:00 (绩效考评, recurring), 2018-10-10 to 2020-01-12 11:30-13:00 (小组会议, recurring), 2018-10-21 to 2018-10-22 15:00-18:00 (非正式会谈), 2018-12-05 16:00-17:00 (非正式会谈).

## Resources

| Resource |
| --- |
| 程 |
| 陈 |
| 邓 |
| 诸葛 |
| 庄 |

## Schedule

| ID | WBS | Task | Type | Duration | Start | Finish | Predecessors | Complete | Remaining | Resources | Work | Actual work | 负责人 | 说明 | 输入 | 输出 |
| --- | --- | --- | --- | --- | --- | --- | --- | --- | --- | --- | --- | --- | --- | --- | --- | --- |
| 1 | 1 | **软件工程系列课程教学辅助网站需求工程计划** |  | 203.75d | 2018-09-19 A | 2019-01-12 |  | 87% | 25.59d |  | 652.98h | 415.48h |  |  |  |  |
| 3 | 1.1 | **知识准备——UML翻转** |  | 55.5d | 2018-10-12 A | 2018-11-10 |  | 99% | 0d |  | 64.67h | 63.67h |  |  |  |  |
| 4 | 1.1.1 | 寻找PPT模板 | manual | 2.5d | 2018-10-12 A | 2018-10-13 A |  | 100% |  | 陈 | 2h | 2h | 陈伟峰 | UML翻转前确定使用的PPT模板 | 寻找PPT模板 | PPT模板 |
| 5 | 1.1.2 | UML概述材料 | manual | 2.25d | 2018-10-12 A | 2018-10-13 A |  | 100% |  | 诸葛; 邓 | 5h | 5h | 诸葛志相 | UML翻转前确定使用的材料 | 寻找概述材料 | UML概述材料 |
| 6 | 1.1.3 | UML概论ppt制作 | manual | 1d | 2018-10-14 A | 2018-10-14 A | 4, 5 | 100% |  | 陈; 程; 邓; 诸葛; 庄 | 5h | 5h | 诸葛志相 | UML概述评审PPT的制作 | UML概述材料 | UML评审PPT |
| 7 | 1.1.4 | UML概述修改 | manual | 1d | 2018-10-15 A | 2018-10-15 A | 6 | 100% |  | 邓; 诸葛 | 1h | 1h | 诸葛志相 | UML评审PPT的更新 | UML评审PPT | UML评审PPT更新 |
| 8 | 1.1.5 | UML概述修改 | manual | 0.25d | 2018-10-15 A | 2018-10-15 A | 7 | 100% |  | 陈; 庄 | 2h | 2h | 陈伟峰 | UML评审PPT的更新 | UML评审PPT | UML评审PPT更新 |
| 9 | 1.1.6 | UML概论评审 | manual | 1d | 2018-10-19 A | 2018-10-19 A | 8 | 100% |  | 庄 | 1h | 1h | 庄毓勋 | UML概述PPT评审 | UML评审PPT |  |
| 10 | 1.1.7 | UML工具ppt制作 | manual | 1d | 2018-10-21 A | 2018-10-21 A | 9, 4 | 100% |  | 陈; 程; 邓; 诸葛; 庄 | 5h | 5h | 诸葛志相 | UML工具PPT制作 | 寻找UML工具材料 | UML工具PPT |
| 11 | 1.1.8 | UML工具ppt修改 | manual | 1d | 2018-10-22 A | 2018-10-22 A | 10 | 100% |  | 程; 邓 | 2h | 2h | 程天柯 | UML工具PPT更新 | UML工具PPT | UML工具PPT更新 |
| 12 | 1.1.9 | UML工具ppt修改 | manual | 1d | 2018-10-23 A | 2018-10-23 A | 11 | 100% |  | 陈; 诸葛 | 2h | 2h | 陈伟峰 | UML工具PPT更新 | UML工具PPT | UML工具PPT更新 |
| 13 | 1.1.10 | UML工具ppt评审 | manual | 1d | 2018-10-24 A | 2018-10-24 A | 12 | 100% |  | 庄 | 1h | 1h | 庄毓勋 | UML工具PPT评审 | UML工具PPT评审 |  |
| 14 | 1.1.11 | UML基础1的ppt材料制作 | manual | 2.6d | 2018-10-27 A | 2018-10-28 | 4, 13 | 99% | 0d | 陈; 程; 邓; 诸葛; 庄 | 5h | 4h | 诸葛志相 | UML基础1PPT制作 | UML基础1材料 | UML基础1PPT |
| 15 | 1.1.12 | UML基础1:ppt修改 | manual | 1d | 2018-10-28 A | 2018-10-28 A | 14 | 100% |  | 邓; 诸葛 | 2h | 2h | 邓晰 | 更新UML基础1PPT | UML基础1PPT | 更新UML基础1PPT |
| 16 | 1.1.13 | UML基础1:ppt修改 | manual | 1d | 2018-10-30 A | 2018-10-30 A | 15 | 100% |  | 陈; 程 | 2h | 2h | 陈伟峰 | 更新UML基础1PPT | UML基础1PPT | 更新UML基础1PPT |
| 17 | 1.1.14 | UML基础1评审 | manual | 0.5d | 2018-10-31 A | 2018-10-31 A | 16 | 100% |  | 程 | 1h | 1h | 程天柯 | UML基础1PPT评审 | UML基础1PPT评审 |  |
| 18 | 1.1.15 | UML基础2的ppt材料制作 | manual | 1d | 2018-11-01 A | 2018-11-01 A | 4, 17 | 100% |  | 陈; 程; 邓; 诸葛; 庄 | 5h | 5h | 诸葛志相 | UML2基础PPT | 寻找UML基础2PPT材料 | UML2基础PPT |
| 19 | 1.1.16 | UML基础2:ppt修改 | manual | 1d | 2018-11-03 A | 2018-11-03 A | 18 | 100% |  | 陈; 程; 邓; 诸葛; 庄 | 4h | 4h | 陈伟峰 | 更新UML基础2PPT | UML基础2PPT | 更新UML基础2PPT |
| 20 | 1.1.17 | UML基础2:ppt修改 | manual | 1.5d | 2018-11-04 A | 2018-11-04 A | 19 | 100% |  | 陈; 程 | 2h | 2h | 陈伟峰 | 更新UML基础2PPT | UML基础2PPT | 更新UML基础2PPT |
| 21 | 1.1.18 | UML基础2:ppt修改 | manual | 1.5d | 2018-11-05 A | 2018-11-05 A | 20 | 100% |  | 邓; 诸葛 | 2h | 2h | 邓晰 | 更新UML基础2PPT | UML基础2PPT | 更新UML基础2PPT |
| 22 | 1.1.19 | UML基础2:ppt修改 | manual | 1d | 2018-11-06 A | 2018-11-06 A | 21 | 100% |  | 庄 | 1h | 1h | 庄毓勋 | 更新UML基础2PPT | UML基础2PPT | 更新UML基础2PPT |
| 23 | 1.1.20 | UML基础2:评审 | manual | 1d | 2018-11-10 A | 2018-11-10 A | 22 | 100% |  | 邓 | 2h | 2h | 邓晰 |  | UML基础2PPT评审 |  |
| 24 | 1.1.21 | UML基础3的ppt材料制作 | manual | 11.3d | 2018-12-09 A | 2018-12-11 A | 23 | 100% |  | 邓; 庄 | 3h | 3h | 庄毓勋 | UML基础2PPT制作 | UML基础3PPT素材 | UML基础3 |
| 25 | 1.1.22 | UML基础3：评审 | manual | 0.5d | 2018-12-23 A | 2018-12-23 A | 24 | 100% |  | 庄 | 1h | 1h | 庄毓勋 |  | UML基础3PPT评审 |  |
| 26 | 1.1.23 | UML4:PPT制作 | manual | 4.5d | 2018-12-24 A | 2018-12-27 A | 25 | 100% |  | 陈; 邓; 庄 | 7h | 7h | 庄毓勋 |  | UML基础4PPT制作 |  |
| 27 | 1.1.24 | UML4：PPT修改 | manual | 1d | 2018-12-27 A | 2018-12-27 A | 26 | 100% |  | 庄 | 0.67h | 0.67h | 庄毓勋 |  | UML基础4修改 |  |
| 28 | 1.1.25 | UML4：评审 | manual | 1d | 2018-12-28 A | 2018-12-28 A | 27 | 100% |  | 庄 | 1h | 1h | 庄毓勋 |  | UML基础4评审 |  |

| ID | WBS | Task | Type | Duration | Start | Finish | Predecessors | Complete | Remaining | Actual start | Total slack | Resources | Work | Actual work | 负责人 | 说明 | 输出 | 输入 |
| --- | --- | --- | --- | --- | --- | --- | --- | --- | --- | --- | --- | --- | --- | --- | --- | --- | --- | --- |
| 29 | 1.2 | **项目启动** |  | 73d | 2018-09-19 A | 2018-11-04 |  | 94% | 4.42d |  | 0d |  | 31h | 30h |  |  |  |  |
| 30 | 1.2.1 | 召开会议启动计划 | manual | 1d | 2018-09-19 A | 2018-09-19 A |  | 100% |  |  |  | 陈; 程; 邓; 诸葛; 庄 | 5h | 5h | 诸葛志相 | 在第一节课上正式开始启动项目会议 | 第一次会议记录 |  |
| 31 | 1.2.2 | 软件资源配置 | manual | 2.5d | 2018-09-20 A | 2018-09-21 A | 30 | 100% |  |  |  | 陈; 邓 | 5h | 5h | 邓晰 | 邓晰对项目结构进行初步配置管理并且记录 | 配置记录表 |  |
| 32 | 1.2.3 | 识别干系人 | manual | 1d | 2018-09-20 A | 2018-09-20 A | 30 | 100% |  |  |  | 诸葛 | 1h | 1h | 诸葛志相 | 对项目的干系人进行初步识别 | 干系人表 |  |
| 33 | 1.2.4 | 编写资源日历 | manual | 1d | 2018-09-20 | 2018-09-20 | 30 |  |  |  |  | 庄 | 1h |  | 庄毓勋 |  | 资源日历 | 每个人的课表 |
| 34 | 1.2.5 | **起草可行分析报告** |  | 13.25d | 2018-10-07 | 2018-10-13 A | 30, 31 | 100% |  | 2018-10-08 |  |  | 16h | 16h |  |  |  |  |
| 35 | 1.2.5.1 | 市场分析可行性初步 | manual | 1d | 2018-10-08 A | 2018-10-08 A | 30 | 100% |  |  |  | 庄 | 2h | 2h | 庄毓勋 | 分析市场存在的产品 | 市场可行性初步计划 | 市场材料 |
| 36 | 1.2.5.2 | 操作可行性初步 | manual | 1d | 2018-10-08 A | 2018-10-08 A | 30 | 100% |  |  |  | 程 | 2h | 2h | 程天柯 | 分析该项目的是否可操作性 | 操作可行性初步计划 | 操作可行性材料 |
| 37 | 1.2.5.3 | 法律可行性初步 | manual | 1d | 2018-10-09 A | 2018-10-09 A |  | 100% |  |  |  | 邓 | 2h | 2h | 邓晰 | 分析在法律层面上的可行性 | 法律可行性初步计划 | 法律可行性材料 |
| 38 | 1.2.5.4 | 经济可行性初步 | manual | 3.5d | 2018-10-11 A | 2018-10-12 A |  | 100% |  |  |  | 邓 | 2h | 2h | 邓晰 | 分析经济上的可行性 | 经济可行性初步计划 | 经济可行性材料 |
| 39 | 1.2.5.5 | 时间和资源可行性初步 | manual | 0.5d | 2018-10-08 A | 2018-10-08 A | 30 | 100% |  |  |  | 诸葛 | 2h | 2h | 诸葛志相 | 分析时间和资源上是否可行 | 时间和资源可行性初步计划 | 校历，配置表 |
| 40 | 1.2.5.6 | SWOT分析初步 | manual | 1d | 2018-10-12 A | 2018-10-12 A | 32 | 100% |  |  |  | 庄 | 1h | 1h | 庄毓勋 | 分析团队的优势和劣势 | SWOT分析表 | 以上可行性初步计划 |
| 41 | 1.2.5.7 | 项目风险 | manual | 1d | 2018-10-10 A | 2018-10-10 A |  | 100% |  |  |  | 程 | 2h | 2h | 程天柯 | 初步分析项目的风险 | 基础风险表 | C2-PRD-项目描述 |
| 42 | 1.2.5.8 | 文档整合 | manual | 1d | 2018-10-13 A | 2018-10-13 A | 35, 36, 37, 38, 39, 40, 41 | 100% |  |  |  | 庄 | 3h | 3h | 庄毓勋 | 可行性分析报告起草 | 可行性分析报告初步 | 以上初步计划以及SWOT |
| 43 | 1.2.6 | logo设计 | manual | 1d | 2018-11-04 A | 2018-11-04 A | 30 | 100% |  |  |  | 庄 | 3h | 3h | 庄毓勋 |  | 队伍Logo设计 | Logo素材 |
| 44 | 1.3 | **项目计划** |  | 127d | 2018-09-27 A | 2018-12-11 | 29 | 92% | 10.46d |  | 0d |  | 120.5h | 117.5h |  |  |  |  |
| 45 | 1.3.1 | 寻找并选择文档模板 | manual | 1d | 2018-09-27 A | 2018-09-27 A | 43, 34 | 100% |  |  |  | 庄 | 2h | 2h | 庄毓勋 | 寻找项目使用模板 | GB模板 |  |
| 46 | 1.3.2 | 起草项目章程 | manual | 1d | 2018-09-27 A | 2018-09-27 A | 34, 39, 41, 30, 43, 45 | 100% |  |  |  | 诸葛 | 2h | 2h | 诸葛志相 | 起草项目章程 | 项目章程起草 | C2-PRD-项目描述 |
| 47 | 1.3.3 | **起草开发计划书** |  | 16.25d | 2018-09-27 | 2018-10-10 |  | 45% | 8.96d | 2018-09-28 |  |  | 17h | 14h |  |  |  |  |
| 48 | 1.3.3.1 | 初步绘制甘特图 | manual | 1d | 2018-09-28 A | 2018-09-28 A | 39, 46, 30 | 100% |  |  |  | 诸葛; 程; 庄 | 4h | 4h | 诸葛志相 | 根据WBS图画甘特图 | 甘特图 | WBS图 |
| 49 | 1.3.3.2 | 子计划初步编写 | manual | 0.4d | 2018-09-30 A | 2018-09-30 A | 31, 39, 41 | 100% |  |  |  | 陈; 程; 邓; 诸葛; 庄 | 5h | 5h | 诸葛志相 | 根据项目设计给出初步子计划 | 子计划初步 | C2-PRD-项目设计 |
| 50 | 1.3.3.3 | OBS图 | manual | 1.5d | 2018-10-08 A | 2018-10-09 A | 32 | 100% |  |  |  | 陈 | 2h | 2h | 陈伟峰 | 根据干系人画OBS图 | OBS图V0.1.0 | 干系人表 |
| 51 | 1.3.3.4 | WBS图 | manual | 8.25d | 2018-10-09 A | 2018-10-12 | 39 | 12% | 7.25d |  |  | 程 | 4h | 1h | 程天柯 | 根据IT项目管理画WBS图 | WBSV0.1.0 | 《IT项目管理》 |
| 52 | 1.3.3.5 | 设置预算 | manual | 1d | 2018-10-13 A | 2018-10-14 A | 38 | 100% |  |  |  | 诸葛 | 1h | 1h | 诸葛志相 |  | 预算表 | 经济可行性初步计划 |
| 53 | 1.3.3.6 | 文档的汇总与编写 | manual | 1d | 2018-10-09 A | 2018-10-09 A | 48, 49, 50, 51 | 100% |  |  |  | 庄 | 1h | 1h | 庄毓勋 | 项目开发按计划书起草 | 项目开发计划书V0.1.0 | 开发计划书材料 |
| 54 | 1.3.4 | 更新开发计划书 | manual | 1d | 2018-10-14 A | 2018-10-14 A | 47, 31 | 100% |  |  |  | 庄; 邓 | 3h | 3h | 庄毓勋 | 排版、修改配置管理计划 | 项目开发计划书V0.1.2 | 项目开发计划书V0.1.1 |
| 55 | 1.3.5 | 更新开发计划书 | manual | 1d | 2018-10-21 A | 2018-10-21 A | 54, 49 | 100% |  |  |  | 庄; 邓 | 3h | 3h | 邓晰 | 修改需求、修改子计划 | 项目开发计划书V0.1.3 | 项目开发计划书V0.1.2 |

| ID | WBS | Task | Type | Duration | Start | Finish | Predecessors | Complete | Actual start | Actual finish | Resources | Work | Actual work | 负责人 | 说明 | 输入 | 输出 |
| --- | --- | --- | --- | --- | --- | --- | --- | --- | --- | --- | --- | --- | --- | --- | --- | --- | --- |
| 56 | 1.3.6 | **起草需求工程计划** |  | 14.25d | 2018-10-15 | 2018-10-21 |  | 100% | 2018-10-14 | 2018-10-20 |  | 23h | 23h |  |  |  |  |
| 57 | 1.3.6.1 | 项目概述 | manual | 2d | 2018-10-15 A | 2018-10-16 A | 34, 55, 46 | 100% |  |  | 诸葛; 邓 | 5h | 5h | 诸葛志相 | 编写项目背景，项目要求等内容 | 项目章程，项目开发计划书，可行性分析报告 | 项目概述 |
| 58 | 1.3.6.2 | 项目人力资源管理初步 | manual | 2.5d | 2018-10-16 A | 2018-10-17 A | 50 | 100% |  |  | 陈 | 2h | 2h | 陈伟峰 | 初步编写人力资源管理计划 | OBS图V0.1.0 | 人力资源管理计划初步 |
| 59 | 1.3.6.3 | 项目风险管理初步 | manual | 2.5d | 2018-10-16 A | 2018-10-17 A | 41 | 100% |  |  | 庄 | 2h | 2h | 庄毓勋 | 初步编写项目风险管理计划初步 | 基础风险表 | 项目风险管理计划初步 |
| 60 | 1.3.6.4 | 项目范围管理初步 | manual | 2.5d | 2018-10-16 A | 2018-10-17 A | 50, 30, 47 | 100% |  |  | 程 | 2h | 2h | 程天柯 | 初步编写项目范围管理计划初步 | WBS图 | 项目范围管理计划初步 |
| 61 | 1.3.6.5 | 项目配置管理初步 | manual | 1d | 2018-10-18 A | 2018-10-18 A | 31 | 100% |  |  | 诸葛 | 2h | 2h | 诸葛志相 | 初步编写项目配置管理计划初步 | 配置记录表 | 项目配置管理计划初步 |
| 62 | 1.3.6.6 | 项目质量管理初步 | manual | 3.5d | 2018-10-18 A | 2018-10-19 A | 46, 55 | 100% |  |  | 邓 | 2h | 2h | 邓晰 | 初步编写项目质量管理计划初步 | 质量管理计划 | 项目质量管理计划初步 |
| 63 | 1.3.6.7 | 项目沟通管理初步 | manual | 4d | 2018-10-18 A | 2018-10-19 A | 33 | 100% |  |  | 邓 | 2h | 2h | 邓晰 | 初步编写项目沟通管理计划初步 | 资源日历 | 项目沟通管理计划初步 |
| 64 | 1.3.6.8 | 项目采购管理初步 | milestone, manual | 0d | 2018-10-18 A | 2018-10-18 A | 35 | 100% |  |  | 陈 |  |  | 陈伟峰 | 初步编写项目采购管理计划初步 | 采购表单 | 项目采购管理计划初步 |
| 65 | 1.3.6.9 | 项目成本管理初步 | manual | 1d | 2018-10-14 A | 2018-10-15 A | 52 | 100% |  |  | 诸葛 | 3h | 3h | 诸葛志相 | 初步编写项目成本管理计划 | 预算表 | 成本详细预算表，项目成本管理计划初步 |
| 66 | 1.3.6.10 | 整合文档以及编写其他内容 | manual | 0.5d | 2018-10-20 A | 2018-10-20 A | 58, 59, 60, 61, 62, 63, 64 | 100% |  |  | 庄 | 3h | 3h | 庄毓勋 | 需求工程计划起草 | 前面所有的需求工程有关的内容 | 需求工程计划V0.1.0 |
| 67 | 1.3.7 | 更新需求工程计划 | manual | 1d | 2018-10-28 A | 2018-10-28 A | 56 | 100% |  |  | 邓 | 2h | 2h | 邓晰 | 修改例会时间，添加采购管理子计划 | 需求开发计划V0.1.1 | 需求开发计划V0.1.2 |
| 68 | 1.3.8 | 更新开发计划书 | manual | 1d | 2018-10-28 A | 2018-10-28 A | 55, 63 | 100% |  |  | 邓 | 2h | 2h | 邓晰 | 修改例会时间 | 项目开发计划书V0.1.3 | 项目开发计划书V0.1.4 |
| 69 | 1.3.9 | 更新需求工程计划 | manual | 1d | 2018-11-04 A | 2018-11-04 A | 56, 59 | 100% |  |  | 陈; 程; 庄 | 2h | 2h | 陈伟峰 | 修改风险项，修改WBS，修改模板 | 需求开发计划V0.1.2 | 需求开发计划V0.1.3 |
| 70 | 1.3.10 | 更新开发计划书 | manual | 1d | 2018-11-04 A | 2018-11-04 A | 68 | 100% |  |  | 程; 邓; 庄 | 2h | 2h | 庄毓勋 | 修改模板、修改WBS、修改风险 | 项目开发计划书V0.1.4 | 项目开发计划书V0.2.0 |
| 71 | 1.3.11 | 更新可行性分析报告 | manual | 1d | 2018-11-11 A | 2018-11-11 A | 34, 41, 35 | 100% |  |  | 庄 | 2h | 2h | 庄毓勋 | 修改市场分析，SWOT分析，政策分析，竞争实力分析，技术可行性分析，时间和资源可行性分析，知识产权可行性分析。 | 可行性报告V0.1.0 | 可行性报告V0.1.1 |
| 72 | 1.3.12 | 更新需求工程计划 | manual | 1d | 2018-11-11 A | 2018-11-11 A | 69, 62, 63 | 100% |  |  | 陈; 邓; 庄 | 1h | 1h | 邓晰 | 修改质量管理子计划、沟通管理子计划、配置管理子计划、项目干系人、人力资源计划、风险子计划 | 需求开发计划V0.1.3 | 需求开发计划V0.1.4 |
| 73 | 1.3.13 | 更新开发计划书 | manual | 1d | 2018-11-11 A | 2018-11-11 A | 70, 61 | 100% |  |  | 陈; 邓 | 1h | 1h | 陈伟峰 | 修改质量管理子计划、配置管理子计划、沟通管理子计划、项目干系人、人力资源管理计划 | 项目开发计划书V0.2.0 | 项目开发计划书V0.2.1 |
| 74 | 1.3.14 | 寻找ISO9001模板 | manual | 1d | 2018-09-28 A | 2018-09-28 A | 45 | 100% |  |  | 庄 | 2h | 2h | 庄毓勋 | 把国标模板更改为ISO9001模板 |  | ISO9001模板 |
| 75 | 1.3.15 | 更新项目章程 | manual | 1d | 2018-11-20 A | 2018-11-20 A | 46, 74 | 100% |  |  | 诸葛 | 1h | 1h | 诸葛志相 | 修改模板 | 项目章程V0.1.1 | 项目章程V0.1.2 |
| 76 | 1.3.16 | 更新可行性分析报告 | manual | 1d | 2018-11-20 A | 2018-11-20 A | 71, 74 | 100% |  |  | 邓 | 1h | 1h | 邓晰 | 修改模板 | 可行性报告V0.1.1 | 可行性报告V0.1.2 |
| 77 | 1.3.17 | 更新需求工程计划 | manual | 0.25d | 2018-11-20 A | 2018-11-20 A | 72, 74 | 100% |  |  | 庄 | 0.5h | 0.5h | 庄毓勋 | 修改软件工程计划模板，更新其他的子计划等。 | 需求开发计划V0.1.4 | 需求开发计划V0.2.1 |
| 78 | 1.3.18 | 更新开发计划书 | manual | 0.5d | 2018-11-20 A | 2018-11-20 A | 73, 74 | 100% |  |  | 庄 | 0.5h | 0.5h | 庄毓勋 | 修改内容和模板 | 项目开发计划书V0.2.1 | 项目开发计划书V0.2.2 |
| 79 | 1.3.19 | 更新项目章程 | manual | 7.5d | 2018-11-21 A | 2018-11-22 A | 75, 74 | 100% |  |  | 程 | 2h | 2h | 程天柯 | 修改模板 | 项目章程V0.1.2 | 项目章程V0.1.3 |
| 80 | 1.3.20 | 更新可行性分析报告 | manual | 1d | 2018-11-21 A | 2018-11-21 A | 76, 74 | 100% |  |  | 庄 | 0.5h | 0.5h | 庄毓勋 | 修改模板和内容 | 可行性报告V0.1.2 | 可行性报告V0.1.3 |
| 81 | 1.3.21 | 更新可行性分析报告 | manual | 1d | 2018-11-24 A | 2018-11-24 A | 80, 74 | 100% |  |  | 庄 | 1h | 1h | 庄毓勋 | 修改操作可行性，经济可行性。 | 可行性报告V0.1.3 | 可行性报告V0.1.4 |
| 82 | 1.3.22 | 更新需求工程计划 | manual | 1d | 2018-11-25 A | 2018-11-25 A | 77, 62 | 100% |  |  | 邓; 庄 | 2h | 2h | 邓晰 | 修改质量管理计划，配置管理计划。 | 需求开发计划V0.2.1 | 需求开发计划V0.2.2 |
| 83 | 1.3.23 | 更新需求工程计划 | manual | 1d | 2018-11-27 A | 2018-11-27 A | 82, 61 | 100% |  |  | 程; 诸葛 | 1h | 1h | 诸葛志相 | 更新了成本管理计划、范围管理计划 | 需求开发计划V0.2.2 | 需求开发计划V0.2.3 |
| 84 | 1.3.24 | 更新开发计划书 | manual | 1d | 2018-11-27 A | 2018-11-27 A | 65, 78 | 100% |  |  | 诸葛 | 2h | 2h | 诸葛志相 | 更新了成本 | 项目开发计划书V0.2.2 | 项目开发计划书V0.2.3 |
| 85 | 1.3.25 | 更新需求工程计划 | manual | 1d | 2018-11-29 A | 2018-11-29 A | 83, 58 | 100% |  |  | 庄 | 1h | 1h | 庄毓勋 | 修改干系人管理计划和配置管理计划 | 需求开发计划V0.2.3 | 需求开发计划V0.2.4 |
| 86 | 1.3.26 | 更新需求工程计划 | manual | 1d | 2018-11-29 A | 2018-11-29 A | 50, 85 | 100% |  |  | 陈 | 2h | 2h | 陈伟峰 | 修改OBS图 | 需求开发计划V0.2.4 | 需求开发计划V0.3.1 |
| 87 | 1.3.27 | 关于组内项目经理更换的重大抉择 | manual | 1d | 2018-11-30 A | 2018-11-30 A | 209, 210 | 100% |  |  | 陈; 程; 邓; 诸葛; 庄 | 1h | 1h |  | 最终决定替换项目经理为庄毓勋 | 召开组内临时会议 | PRD-G14-11-30临时会议记录 |
| 88 | 1.3.28 | 更新WBS图 | manual | 1d | 2018-11-30 A | 2018-11-30 A | 51 | 100% |  |  | 庄 | 1h | 1h | 庄毓勋 | 修改WBS图 | WBSV0.1.0 | WBSV0.1.1 |
| 89 | 1.3.29 | 更新OBS图 | manual | 0.25d | 2018-11-30 A | 2018-11-30 A | 50 | 100% |  |  | 庄 | 0.5h | 0.5h | 庄毓勋 | 修改OBS图 | OBS图V0.1.0 | OBS图V0.1.1 |
| 90 | 1.3.30 | 更新风险管理计划 | manual | 0.67d | 2018-10-18 A | 2018-10-18 A | 59 | 100% |  |  | 庄 | 2h | 2h | 庄毓勋 | 添加AB角色，风险触发条件 | 风险管理计划 | 风险管理计划 |
| 91 | 1.3.31 | 更新可行性分析报告 | manual | 0.25d | 2018-12-01 A | 2018-12-01 A | 90, 81 | 100% |  |  | 庄 | 0.5h | 0.5h | 庄毓勋 | 修改风险，修改模板等。 | 可行性报告V0.1.4 | 可行性报告V0.2.1 |
| 92 | 1.3.32 | 修改里程碑 | manual | 0.5d | 2018-11-22 A | 2018-11-22 A | 79 | 100% |  |  | 庄 | 0.5h | 0.5h | 庄毓勋 | 修改为最新的杨枨老师要求里程碑 | 里程碑 | 里程碑 |
| 93 | 1.3.33 | 更新项目章程 | manual | 1d | 2018-12-01 A | 2018-12-01 A | 79, 92 | 100% |  |  | 庄 | 1h | 1h | 庄毓勋 | 修改里程碑 | 项目章程V0.1.3 | 项目章程V0.1.4 |
| 94 | 1.3.34 | 更新需求工程计划 | manual | 0.25d | 2018-12-01 A | 2018-12-01 A | 86, 88, 89 | 100% |  |  | 庄 | 0.5h | 0.5h | 庄毓勋 | WBS图、OBS图、输入输出删除后还未添加 | 需求开发计划V0.3.1 | 需求开发计划V0.3.2 |
| 95 | 1.3.35 | 更新需求工程计划 | manual | 0.5d | 2018-12-02 A | 2018-12-02 A | 94, 89 | 100% |  |  | 庄 | 1h | 1h | 庄毓勋 | 增加WBS图、OBS图，还缺少甘特图 | 需求开发计划V0.3.2 | 需求开发计划V0.3.3 |
| 96 | 1.3.36 | 更新项目章程 | manual | 1d | 2018-12-03 A | 2018-12-03 A | 93 | 100% |  |  | 庄 | 1h | 1h | 庄毓勋 | 修改费用和内容 | 项目章程V0.1.4 | 项目章程V0.2.1 |
| 97 | 1.3.37 | 更新开发计划书 | manual | 1d | 2018-12-03 A | 2018-12-03 A | 84, 79 | 100% |  |  | 庄 | 1h | 1h | 庄毓勋 | 修改模板、修改内容 | 项目开发计划书V0.2.3 | 项目开发计划书V0.2.4 |
| 98 | 1.3.38 | 更新需求工程计划 | manual | 0.25d | 2018-12-03 A | 2018-12-03 A | 95, 88 | 100% |  |  | 庄 | 0.5h | 0.5h | 庄毓勋 | 修改WBS内输入输出 | 需求开发计划V0.3.3 | 需求开发计划V0.3.4 |
| 99 | 1.3.39 | 更新需求工程计划 | manual | 0.5d | 2018-12-04 A | 2018-12-04 A | 98, 88 | 100% |  |  | 庄 | 1h | 1h | 庄毓勋 | 完善WBS的输入输出 | 需求开发计划V0.3.4 | 需求开发计划V0.4.1 |
| 100 | 1.3.40 | 更新需求工程计划 | manual | 2.5d | 2018-12-04 A | 2018-12-05 A | 99 | 100% |  |  | 邓 | 1h | 1h | 邓晰 | 修改页眉、完成日期等 | 需求开发计划V0.4.1 | 需求开发计划V0.4.2 |
| 101 | 1.3.41 | 更新可行性分析报告 | manual | 1d | 2018-12-05 A | 2018-12-05 A | 91 | 100% |  |  | 庄 | 2h | 2h | 庄毓勋 | 修改背景 | 可行性报告V0.2.1 | 可行性报告V0.2.2 |
| 102 | 1.3.42 | 更新项目章程 | manual | 0.5d | 2018-12-05 A | 2018-12-05 A | 96, 92 | 100% |  |  | 庄 | 0.5h | 0.5h | 庄毓勋 | 修改里程碑 | 项目章程V0.2.1 | 项目章程V0.2.2 |
| 103 | 1.3.43 | 项目章程 | manual | 0.25d | 2018-12-05 A | 2018-12-05 A | 102 | 100% |  |  | 庄 | 0.5h | 0.5h | 庄毓勋 | 修改背景内容 | 项目章程V0.2.2 | 项目章程V0.2.3 |
| 104 | 1.3.44 | 更新需求工程计划 | manual | 0.5d | 2018-12-05 A | 2018-12-05 A | 100, 92 | 100% |  |  | 庄 | 1h | 1h | 庄毓勋 | 修改里程碑和上交文件、修改WBS图 | 需求开发计划V0.4.2 | 需求开发计划V0.4.3 |
| 105 | 1.3.45 | 更新需求工程计划 | manual | 0.25d | 2018-12-05 A | 2018-12-05 A | 104 | 100% |  |  | 庄 | 0.5h | 0.5h | 庄毓勋 | 修改背景内容 | 需求开发计划V0.4.3 | 需求开发计划V0.4.4 |
| 106 | 1.3.46 | 更新需求工程计划 | manual | 0.5d | 2018-12-05 A | 2018-12-05 A | 105 | 100% |  |  | 庄 | 1h | 1h | 庄毓勋 | 删除重复内容 | 需求开发计划V0.4.4 | 需求开发计划V0.5.1 |
| 107 | 1.3.47 | 更新开发计划书 | manual | 0.5d | 2018-12-05 A | 2018-12-05 A | 97, 92 | 100% |  |  | 庄 | 1h | 1h | 庄毓勋 | 修改里程碑 | 项目开发计划书V0.2.4 | 项目开发计划书V0.3.0 |
| 108 | 1.3.48 | 更新开发计划书 | manual | 1d | 2018-12-05 A | 2018-12-05 A | 107 | 100% |  |  | 庄 | 2h | 2h | 庄毓勋 | 修改背景 | 项目开发计划书V0.3.0 | 项目开发计划书V0.3.1 |
| 109 | 1.3.49 | 更新需求工程计划 | manual | 0.5d | 2018-12-06 A | 2018-12-06 A | 106, 58 | 100% |  |  | 庄 | 1h | 1h | 庄毓勋 | 修改干系人列表（添加杨老师为客户代表），修改配置管理计划（添加最新目录结构的描述） | 需求开发计划V0.5.1 | 需求开发计划V0.5.2 |
| 110 | 1.3.50 | 更新可行性分析报告 | manual | 0.5d | 2018-12-06 A | 2018-12-06 A | 101, 40 | 100% |  |  | 诸葛; 庄 | 1h | 1h | 诸葛志相 | 修改客户代表，修改SWOT | 可行性报告V0.2.2 | 可行性报告V0.2.3 |
| 111 | 1.3.51 | 更新项目开发计划书 | manual | 1d | 2018-12-06 A | 2018-12-06 A | 108 | 100% |  |  | 庄 | 1h | 1h | 庄毓勋 | 修改模板描述 | 项目开发计划书V0.3.0 | 项目开发计划书V0.3.2 |
| 112 | 1.3.52 | 甘特图修订 | manual | 1d | 2018-12-07 A | 2018-12-07 A | 48 | 100% |  |  | 庄 | 7h | 7h | 庄毓勋 | 修改甘特图 | 甘特图V0.1.0 | 甘特图V0.1.1 |
| 113 | 1.3.53 | 确认可行性分分析报告 | manual | 1d | 2018-12-09 A | 2018-12-10 A | 110 | 100% |  |  | 诸葛 | 2h | 2h | 诸葛志相 | 修改背景错别字 | 可行性报告V0.2.3 | 可行性报告V0.2.4 |
| 114 | 1.3.54 | 确认项目总体计划书 | manual | 1d | 2018-12-09 A | 2018-12-10 A | 111 | 100% |  |  | 陈 | 2h | 2h | 陈伟峰 | 修改背景，修改错别字，修改沟通计划 | 项目总体计划书V0.3.2 | 项目总体计划V0.3.3 |
| 115 | 1.3.55 | 更新愿景和范围文档 | manual | 1d | 2018-12-09 A | 2018-12-09 A |  | 100% |  |  | 庄 | 1h | 1h | 庄毓勋 | 修改背景，上下问题，具体描述等。 | 愿景和范围文档V0.1.2 | 愿景和范围文档V0.1.3 |
| 116 | 1.3.56 | 确认需求工程计划 | manual | 1d | 2018-12-09 A | 2018-12-10 A | 109 | 100% |  |  | 程 | 2h | 2h | 程天柯 | 修改一些细节，背景描述，沟通计划。 | 需求工程计划V0.5.2 | 需求工程计划V0.5.3 |
| 117 | 1.3.57 | 需求工程计划 | milestone, manual | 1d | 2018-12-10 A | 2018-12-11 A | 116 | 100% |  |  | 诸葛 | 1h | 1h | 庄毓勋 | 通过评审 | 需求工程计划V0.5.3 | 需求工程计划V1.1.0 |
| 118 | 1.3.58 | 项目总体计划书 | milestone, manual | 1d | 2018-12-10 A | 2018-12-11 A | 114 | 100% |  |  | 程 | 1h | 1h | 庄毓勋 | 通过评审 | 项目总体计划V0.3.3 | 项目总体计划V1.1.0 |
| 119 | 1.3.59 | 可行性分析报告 | milestone, manual | 1d | 2018-12-07 A | 2018-12-07 A | 110 | 100% |  |  | 陈 | 1h | 1h | 庄毓勋 | 通过评审 | 可行性报告V0.2.4 | 可行性报告V1.1.0 |
| 120 | 1.3.60 | 项目章程 | milestone, manual | 1d | 2018-12-06 A | 2018-12-06 A | 103 | 100% |  |  | 邓 | 1h | 1h | 庄毓勋 | 通过评审 | 项目章程V0.2.3 | 项目章程V1.1.0 |

| ID | WBS | Task | Type | Duration | Start | Finish | Predecessors | Complete | Remaining | Total slack | Resources | Work | Actual work | 负责人 | 说明 | 输入 | 输出 |
| --- | --- | --- | --- | --- | --- | --- | --- | --- | --- | --- | --- | --- | --- | --- | --- | --- | --- |
| 121 | 1.4 | **项目执行** |  | 89.25d? | 2018-11-28 A | 2019-01-13 | 44 | 85% | 13.82d? | 0d |  | 268.81h | 143.81h |  |  |  |  |
| 122 | 1.4.1 | **需求开发** |  | 60.5d? | 2018-11-28 A | 2018-12-30 |  | 96% | 2.65d? | 0d |  | 199.81h | 143.81h |  |  |  |  |
| 123 | 1.4.1.1 | **需求获取** |  | 32.25d? | 2018-11-28 A | 2018-12-15 |  | 97% | 0.9d? | 0d |  | 62.5h | 62.5h |  |  |  |  |
| 124 | 1.4.1.1.1 | 范围和愿景文档 | manual | 8d | 2018-11-28 A | 2018-11-29 A | 103, 111, 110, 106 | 100% |  |  | 庄 | 4h | 4h | 庄毓勋 | 初稿 | 看需求工程相关书籍 | 愿景和范围文档V0.1.0 |
| 125 | 1.4.1.1.2 | 初步绘制低保真界面原型（网站） | manual | 21.75d | 2018-11-28 A | 2018-12-03 A | 124 | 100% |  |  | 陈; 邓 | 9h | 9h | 邓晰 | 初步画出低保真网站界面原型 | 大量网站素材 | 初步低保真界面原型（网站） |
| 126 | 1.4.1.1.3 | 初步绘低保真证界面原型（APP） | manual | 12d | 2018-11-28 A | 2018-12-03 A | 124 | 100% |  |  | 程; 诸葛 | 9h | 9h | 诸葛志相 | 初步画出低保真APP界面原型 | 大量app素材 | 初步低保真界面原型（app） |
| 127 | 1.4.1.1.4 | 用户群分类 | manual | 4.7d | 2018-11-30 A | 2018-12-02 A | 124 | 100% |  |  | 邓 | 2h | 2h | 邓晰 |  |  |  |
| 128 | 1.4.1.1.5 | 确定开发过程 | manual | 3d | 2018-12-02 A | 2018-12-04 A | 124, 139 | 100% |  |  | 程 | 2.5h | 2.5h | 程天柯 |  |  |  |
| 129 | 1.4.1.1.6 | 选择产品代表 | manual | 2.7d | 2018-12-05 A | 2018-12-06 A | 124, 139 | 100% |  |  | 邓 | 2h | 2h | 邓晰 |  |  |  |
| 130 | 1.4.1.1.7 | 建立核心队伍 | manual | 4.15d | 2018-12-05 A | 2018-12-06 A | 124, 129, 139 | 100% |  |  | 诸葛 | 2h | 2h | 诸葛志相 |  |  |  |
| 131 | 1.4.1.1.8 | 确定使用实例 | manual | 3d | 2018-12-05 A | 2018-12-06 A | 124, 128 | 100% |  |  | 程 | 2h | 2h | 程天柯 |  |  |  |
| 132 | 1.4.1.1.9 | 修改绘制APP原型低保真 | manual | 2.75d | 2018-12-01 A | 2018-12-02 A | 126 | 100% |  |  | 程; 诸葛 | 9h | 9h | 程天柯 |  |  |  |
| 133 | 1.4.1.1.10 | 修改绘制网页原型低保真 | manual | 1d | 2018-12-03 A | 2018-12-03 A | 125 | 100% |  |  | 陈; 邓 | 5h | 5h | 陈伟峰 |  |  |  |
| 134 | 1.4.1.1.11 | 更新愿景和范围文档 | manual | 1d | 2018-12-05 A | 2018-12-05 A | 125 | 100% |  |  | 庄 | 1h | 1h | 庄毓勋 | 干系人同步 | 愿景和范围文档V0.1.0 | 愿景和范围文档V0.1.1 |
| 135 | 1.4.1.1.12 | 更新愿景和范围文档 | manual | 0.5d | 2018-12-06 A | 2018-12-06 A | 134 | 100% |  |  | 庄 | 0.5h | 0.5h | 庄毓勋 | 修改特性 | 愿景和范围文档V0.1.1 | 愿景和范围文档V0.1.2 |
| 136 | 1.4.1.1.13 | 更新愿景和范围文档 | manual | 0.5d | 2018-12-07 A | 2018-12-08 A | 135 | 100% |  |  | 庄 | 1h | 1h | 庄毓勋 | 修改背景，上下问题，具体描述等。 | 愿景和范围文档V0.1.2 | 愿景和范围文档V0.1.3 |
| 137 | 1.4.1.1.14 | 更新愿景和范围文档 | manual | 1d | 2018-12-08 A | 2018-12-08 A | 136 | 100% |  |  | 庄; 邓 | 1h | 1h | 庄毓勋 | 删除最初版本的范围中一些内容。 | 愿景和范围文档V0.1.3 | 愿景和范围文档V0.1.4 |
| 138 | 1.4.1.1.15 | 更新愿景和范围文档 | manual | 0.5d | 2018-12-14 A | 2018-12-14 A | 137 | 100% |  |  | 庄 | 0.5h | 0.5h | 庄毓勋 | 更新愿景和范围文档内容 | 愿景和范围文档V0.1.4 | 愿景和范围文档V0.2.1 |
| 139 | 1.4.1.1.16 | 发送客户代表，产品代表，管理员代表，学生代表邀请函 | manual | 1d | 2018-12-02 A | 2018-12-02 A | 127 | 100% |  |  | 庄 | 1h | 1h | 庄毓勋 | 邀请用户群成为项目代表 | 客户代表邀请函模板，产品代表邀请函模板，管理员代表邀请函模板，学生代表邀请函模板 | 要求他们成为客户代表、产品代表、管理员代表、学生代表 |
| 140 | 1.4.1.1.17 | **具体需求获取** |  | 1d | 2018-11-28 A | 2018-11-28 |  | 33% | 0.67d |  |  | 4h | 4h |  |  |  |  |
| 141 | 1.4.1.1.17.1 | 教师代表需求初步获取 | manual | 0.25d | 2018-11-28 A | 2018-11-29 A | 139 | 100% |  |  | 陈; 程; 邓; 诸葛; 庄 | 2h | 2h | 庄毓勋 | 初步获取教师的需求 | 教师访谈 | 教师代表需求初步表 |
| 142 | 1.4.1.1.17.2 | 学生代表需求初步获取 | manual | 0.25d | 2018-11-28 A | 2018-11-29 A | 139 | 100% |  |  | 陈; 程; 邓; 诸葛; 庄 | 2h | 2h | 庄毓勋 | 初步获取学生的需求 | 学生访谈 | 学生代表需求初步表 |
| 143 | 1.4.1.1.17.3 | 管理员代表需求初步获取 | manual | 1d? | 2018-11-28 | 2018-11-28 |  |  |  |  |  |  |  |  |  |  |  |
| 144 | 1.4.1.1.18 | 编写用例文档 | manual | 1d | 2018-12-14 A | 2018-12-15 A | 138 | 100% |  |  | 陈; 邓 | 5h | 5h | 邓晰 |  | 教师代表需求初步表，学生代表需求初步表 | 用例文档 |
| 145 | 1.4.1.1.19 | 为需求进行排序 | manual | 1d | 2018-11-29 A | 2018-11-29 A | 141, 142 | 100% |  |  | 诸葛 | 2h | 2h | 诸葛志相 |  | 教师代表需求初步表，学生代表需求初步表 | 需求排序表 |
| 146 | 1.4.1.1.20 | 召开JAD会议对需求进行确认 | manual | 1d? | 2018-11-28 | 2018-11-28 |  |  |  |  |  |  |  |  |  |  | JAD会议纪要 |

| ID | WBS | Task | Type | Duration | Start | Finish | Predecessors | Complete | Remaining | Actual start | Actual finish | Total slack | Resources | Work | Actual work | 负责人 | 输入 | 输出 | 说明 |
| --- | --- | --- | --- | --- | --- | --- | --- | --- | --- | --- | --- | --- | --- | --- | --- | --- | --- | --- | --- |
| 147 | 1.4.1.2 | **需求分析** |  | 0.5d? | 2018-12-06 | 2018-12-06 | 123 | 99% | 0d? | 2018-11-30 |  |  | 庄; 陈; 程; 邓; 诸葛 | 28h | 23h |  |  |  |  |
| 148 | 1.4.1.2.1 | 绘制关联图 | manual | 1d | 2018-12-15 A | 2018-12-15 A | 138 | 100% |  |  |  |  | 邓 | 2h | 2h | 邓晰 | 愿景和范围文档V0.2.1 | 上下文图 |  |
| 149 | 1.4.1.2.2 | 绘制高保真APP原型 | manual | 3.5d | 2018-12-15 A | 2018-12-16 A | 126, 138 | 100% |  |  |  |  | 程; 诸葛 | 7h | 7h | 程天柯 | 初步低保真界面原型（app） | 初步高保真界面原型（app） |  |
| 150 | 1.4.1.2.3 | 绘制高保真网站原型 | manual | 5.5d | 2018-12-15 A | 2018-12-16 A | 125, 138 | 100% |  |  |  |  | 陈; 邓 | 6h | 6h | 邓晰 | 初步低保真界面原型（网站） | 初步高保真界面原型（网站） |  |
| 151 | 1.4.1.2.4 | 确定需求优先级 | manual | 1d | 2018-11-30 A | 2018-11-30 A | 145 | 100% |  |  |  |  | 诸葛 | 3h | 3h | 诸葛志相 | 需求排序表 | 需求优先级表 |  |
| 152 | 1.4.1.2.5 | 编写数据字典 | manual | 0.71d | 2018-12-14 A | 2018-12-14 A | 138 | 100% |  |  |  |  | 程; 陈 | 5h | 5h | 程天柯 | 教师代表需求初步表，学生代表需求初步表 | 数据字典 |  |
| 153 | 1.4.1.3 | **需求规格说明** |  | 14.25d | 2018-12-21 | 2018-12-28 | 147 | 94% | 0.79d | 2018-12-13 |  |  | 陈; 程; 邓; 诸葛; 庄 | 109.31h | 58.31h |  |  |  |  |
| 154 | 1.4.1.3.1 | **编写需求规格说明书** |  | 8.5d | 2018-12-14 A | 2018-12-20 |  | 93% | 0.61d |  |  | 0d |  | 14h | 13h |  |  |  |  |
| 155 | 1.4.1.3.1.1 | 寻找需求规格模板 | manual | 0.5d | 2018-12-14 A | 2018-12-14 A | 138 | 100% |  |  |  |  | 庄 | 1h | 1h | 庄毓勋 | ISO+书上的模板 | 需求规格模板 | 寻找需求规格模板 |
| 156 | 1.4.1.3.1.2 | 需求规格说明书第一二章节 | manual | 0.5d | 2018-12-14 A | 2018-12-14 A | 138, 114, 113 | 100% |  |  |  |  | 庄 | 1h | 1h | 庄毓勋 | 可行性分析，范围和愿景文档 | 需求规格说明书第一二章节 | 编写第一二章 |
| 157 | 1.4.1.3.1.3 | 需求规格说明书第三章 | manual | 5.5d | 2018-12-15 A | 2018-12-18 A | 138, 144 | 100% |  |  |  |  | 陈; 邓 | 5h | 5h | 邓晰 | 用例文档，范围和愿景文档 | 需求规格说明书第三章 | 编写第三章 |
| 158 | 1.4.1.3.1.4 | 需求规格说明书第四章 | manual | 5.5d | 2018-12-15 A | 2018-12-18 A | 138, 152, 145 | 100% |  |  |  |  | 程; 诸葛 | 5h | 5h | 程天柯 | 数据字典，范围和愿景文档 | 需求规格说明书第四章 | 编写第四章 |
| 159 | 1.4.1.3.1.5 | 需求规格说明书第五章 | manual | 1d | 2018-12-17 | 2018-12-17 | 138, 149, 150 |  |  |  |  |  | 陈; 程; 邓; 诸葛 | 1h |  | 邓晰 | 界面原型 | 需求规格说明书第五张 | 编写第五张 |
| 160 | 1.4.1.3.1.6 | 整合需求规格说明书 | manual | 1d | 2018-12-19 A | 2018-12-20 A | 155, 156, 157, 158, 159 | 100% |  |  |  |  | 庄 | 1h | 1h | 庄毓勋 | 需求规格说明书所有章节 | 起草规格说明书 | 起草规格说明书 |
| 161 | 1.4.1.3.2 | **管理员需求跟踪** |  | 8d | 2018-12-17 A | 2018-12-21 | 220 | 100% |  |  | 2018-12-29 |  | 庄 | 7.5h | 7.5h | 庄毓勋 | 管理员代表需求初步表 | 用例图，用例文档，界面原型修改 |  |
| 162 | 1.4.1.3.2.1 | 整合管理员需求 | manual | 8d | 2018-12-17 A | 2018-12-21 A | 220 | 100% |  |  |  |  | 庄 | 0.5h | 0.5h | 庄毓勋 |  |  |  |
| 163 | 1.4.1.3.2.2 | 编写管理员用例图 | manual | 8d | 2018-12-17 A | 2018-12-21 A | 220 | 100% |  |  |  |  | 庄 | 1h | 1h | 庄毓勋 |  |  |  |
| 164 | 1.4.1.3.2.3 | 编写管理员用例文档 | manual | 8d | 2018-12-21 A | 2018-12-26 A | 163 | 100% |  |  |  |  | 庄 | 1h | 1h | 庄毓勋 |  |  |  |
| 165 | 1.4.1.3.2.4 | 绘制管理员界面原型 | manual | 8d | 2018-12-26 A | 2018-12-29 A | 164, 170, 176 | 100% |  |  |  |  | 庄 | 2h | 2h | 庄毓勋 |  |  |  |
| 166 | 1.4.1.3.2.5 | 编写数据字典 | manual | 8d | 2018-12-17 A | 2018-12-21 A | 220 | 100% |  |  |  |  | 庄 | 0.5h | 0.5h | 庄毓勋 |  |  |  |
| 167 | 1.4.1.3.3 | **学生需求跟踪** |  | 8d | 2018-12-18 | 2018-12-21 | 219 | 100% |  | 2018-12-13 | 2018-12-26 |  | 陈; 邓 | 17.81h | 17.81h | 邓晰 | 学生代表需求初步表 | 用例图，用例文档，界面原型修改 |  |
| 168 | 1.4.1.3.3.1 | 整合学生需求 | manual | 8d | 2018-12-13 A | 2018-12-16 A | 219 | 100% |  |  |  |  | 陈; 邓 | 1h | 1h | 邓晰 |  |  |  |
| 169 | 1.4.1.3.3.2 | 编写学生用例图 | manual | 8d | 2018-12-13 A | 2018-12-16 A | 219 | 100% |  |  |  |  | 陈; 邓 | 2h | 2h | 邓晰 |  |  |  |
| 170 | 1.4.1.3.3.3 | 编写学生用例文档 | manual | 5d | 2018-12-21 A | 2018-12-23 A | 169 | 100% |  |  |  |  | 陈; 邓 | 6h | 6h | 邓晰 |  |  |  |
| 171 | 1.4.1.3.3.4 | 绘制学生界面原型 | manual | 8d | 2018-12-17 A | 2018-12-21 A | 219, 169 | 100% |  |  |  |  | 陈; 邓 | 2h | 2h | 邓晰 |  |  |  |
| 172 | 1.4.1.3.3.5 | 编写数据字典 | manual | 8d | 2018-12-21 A | 2018-12-26 A | 171 | 100% |  |  |  |  | 陈; 邓 | 2h | 2h | 邓晰 |  |  |  |

| ID | WBS | Task | Type | Duration | Start | Finish | Predecessors | Complete | Actual finish | Constraint | Resources | Work | Actual work | 负责人 | 输入 | 输出 | 说明 |
| --- | --- | --- | --- | --- | --- | --- | --- | --- | --- | --- | --- | --- | --- | --- | --- | --- | --- |
| 173 | 1.4.1.3.4 | **教师需求跟踪** |  | 8d | 2018-12-13 A | 2018-12-16 | 221 | 100% | 2018-12-30 |  | 程; 诸葛 | 16h | 16h | 诸葛志相 | 教师代表需求初步表 | 用例图，用例文档，界面原型修改 |  |
| 174 | 1.4.1.3.4.1 | 整合教师需求 | manual | 8d | 2018-12-17 A | 2018-12-21 A | 221 | 100% |  |  | 程; 诸葛 | 1h | 1h | 诸葛志相 |  |  |  |
| 175 | 1.4.1.3.4.2 | 编写教师用例图 | manual | 8d | 2018-12-17 A | 2018-12-21 A | 221 | 100% |  |  | 程; 诸葛 | 2h | 2h | 诸葛志相 |  |  |  |
| 176 | 1.4.1.3.4.3 | 编写教师用例文档 | manual | 6.5d | 2018-12-21 A | 2018-12-23 A | 175 | 100% |  |  | 程; 诸葛 | 6h | 6h | 诸葛志相 |  |  |  |
| 177 | 1.4.1.3.4.4 | 绘制教师界面原型 | manual | 8d | 2018-12-22 A | 2018-12-26 A | 175 | 100% |  |  | 程; 诸葛 | 2h | 2h | 诸葛志相 |  |  |  |
| 178 | 1.4.1.3.4.5 | 编写数据字典 | manual | 8d | 2018-12-26 A | 2018-12-30 A | 177 | 100% |  |  | 程; 诸葛 | 2h | 2h | 诸葛志相 |  |  |  |
| 179 | 1.4.1.3.5 | 初步编写SRS评审PPT | manual | 1d | 2018-12-20 | 2018-12-20 | 160 |  |  |  | 庄 | 2h |  | 庄毓勋 |  | SRS评审初步PPT编写 |  |
| 180 | 1.4.1.3.6 | APP界面原型修改 | manual | 4d | 2018-12-26 A | 2018-12-27 A | 171, 177 | 100% |  |  | 庄 | 2h | 2h | 庄毓勋 | APP界面原型 | APP界面原型修改 |  |
| 181 | 1.4.1.3.7 | 网页端界面原型修改 | manual | 4d | 2018-12-26 A | 2018-12-27 A | 171, 177 | 100% |  |  | 邓 | 2h | 2h | 邓晰 | 网页界面原型 | 网页界面原型修改 |  |
| 182 | 1.4.1.3.8 | 需求规格说明书 | milestone, manual | 6d | 2018-12-27 | 2018-12-29 | 160 |  |  |  | 陈; 程; 诸葛 | 3h |  | 陈伟峰 | 需求规格说明书V0.1.0 | 需求规格说明书V0.1.1 | 增加了教师答疑相关信息 |
| 183 | 1.4.2 | 需求规格审核 | manual | 29.5d | 2018-12-29 | 2019-01-13 | 184 |  |  |  | 陈; 邓; 诸葛; 庄 | 64h |  |  |  |  |  |
| 184 | 1.4.3 | 需求管理 | manual | 0.5d? | 2018-12-06 | 2018-12-06 | 123 |  |  |  | 陈; 程; 邓; 诸葛; 庄 | 5h |  |  |  |  |  |
| 185 | 1.5 | **项目监控** |  | 197.25d | 2018-09-25 A | 2019-01-12 | 29 | 100% | 2018-12-26 |  |  | 60.5h | 60.5h |  |  |  |  |
| 186 | 1.5.1 | 会议模板初版 | manual | 1d | 2018-09-25 A | 2018-09-25 A |  | 100% |  |  | 陈 | 5h | 5h | 陈伟峰 | 会议记录找模板 | PRD2018-G14-会议记录模板 |  |
| 187 | 1.5.2 | 第一次小组会议 | manual | 1d | 2018-09-25 A | 2018-09-25 A | 186, 198, 214 | 100% |  |  | 陈; 程; 邓; 诸葛; 庄 | 1.5h | 1.5h | 陈伟峰 | 第一次小组会议 | PRD2018-G14-0925会议记录 |  |
| 188 | 1.5.3 | 第二次小组会议 | manual | 1d | 2018-09-29 A | 2018-09-29 A | 187 | 100% |  |  | 陈; 程; 邓; 诸葛; 庄 | 1.5h | 1.5h | 陈伟峰 | 第二次小组会议 | PRD2018-G14-0929会议记录 |  |
| 189 | 1.5.4 | 第一周绩效考评 | manual | 1d | 2018-09-29 A | 2018-09-29 A | 188 | 100% |  |  | 陈; 程; 邓; 诸葛; 庄 | 1.5h | 1.5h | 陈伟峰 | 第一周绩效考评 | 20180925评分 |  |
| 190 | 1.5.5 | 第三次小组会议 | manual | 0.1d | 2018-10-10 A | 2018-10-10 A | 188, 189 | 100% |  |  | 陈; 程; 邓; 诸葛; 庄 | 1.5h | 1.5h | 陈伟峰 | 第三次小组会议 | PRD2018-G14-1010会议记录 |  |
| 191 | 1.5.6 | 第二周绩效考评 | manual | 1d | 2018-10-10 A | 2018-10-10 A | 190 | 100% |  |  | 陈; 程; 邓; 诸葛; 庄 | 1.5h | 1.5h | 陈伟峰 | 第二周绩效考评 | 20181007评分 |  |
| 192 | 1.5.7 | 第四次小组会议 | manual | 1d | 2018-10-17 A | 2018-10-17 A | 190, 191 | 100% |  |  | 陈; 程; 邓; 诸葛; 庄 | 1h | 1h | 陈伟峰 | 第四次小组会议 | PRD2018-G14-1017会议记录 |  |
| 193 | 1.5.8 | 第三周绩效考评 | manual | 1d | 2018-10-17 A | 2018-10-17 A | 192 | 100% |  | start no earlier than 2018-10-17 | 陈; 程; 邓; 诸葛; 庄 | 1h | 1h | 陈伟峰 | 第三周绩效考评 | 20181010评分 |  |
| 194 | 1.5.9 | 与杨枨老师进行非正式访谈 | manual | 0.1d | 2018-10-21 A | 2018-10-21 A | 192 | 100% |  |  | 陈; 程; 邓; 诸葛; 庄 | 1h | 1h | 陈伟峰 | 与杨枨老师进行非正式访谈 | PRD2018-G14-1021访谈记录 |  |
| 195 | 1.5.10 | 第一次临时会议 | manual | 0.1d | 2018-10-21 A | 2018-10-21 A | 194 | 100% |  |  | 陈; 程; 邓; 诸葛; 庄 | 1h | 1h | 陈伟峰 | 第一次临时会议 | PRD2018-G14-1021临时会议 |  |
| 196 | 1.5.11 | 第五次小组会议 | manual | 0.1d | 2018-10-25 A | 2018-10-25 A | 192, 193 | 100% |  |  | 陈; 程; 邓; 诸葛; 庄 | 1h | 1h | 陈伟峰 | 第五次小组会议 | PRD2018-G14-1025会议记录 |  |
| 197 | 1.5.12 | 第四周绩效考评 | manual | 0.1d | 2018-10-25 A | 2018-10-25 A | 196 | 100% |  |  | 陈; 程; 邓; 诸葛; 庄 | 1h | 1h | 陈伟峰 | 第四周绩效考评 | 20181014评分 |  |
| 198 | 1.5.13 | 会议模板修改 | manual | 1d | 2018-09-26 A | 2018-09-26 A | 186 | 100% |  |  | 陈 | 7h | 7h | 陈伟峰 | PRD2018-G14-会议记录模板 | PRD2018-G14-会议记录模板 |  |
| 199 | 1.5.14 | 第六次小组会议 | manual | 1d | 2018-10-31 A | 2018-10-31 A | 196, 197, 186 | 100% |  |  | 陈; 程; 邓; 诸葛; 庄 | 1h | 1h | 陈伟峰 | 第六次小组会议 | PRD2018-G14-1031会议记录 |  |
| 200 | 1.5.15 | 第五周绩效考评 | manual | 0.1d | 2018-11-01 A | 2018-11-01 A | 199 | 100% |  |  | 陈; 程; 邓; 诸葛; 庄 | 1h | 1h | 陈伟峰 | 第五周绩效考评 | 20181021评分 |  |
| 201 | 1.5.16 | 第七次小组会议 | manual | 1d | 2018-11-07 A | 2018-11-07 A | 199, 200 | 100% |  |  | 陈; 程; 邓; 诸葛; 庄 | 1h | 1h | 陈伟峰 | 第七次小组会议 | PRD2018-G14-1107会议记录 |  |
| 202 | 1.5.17 | 第六周绩效考评 | manual | 1d | 2018-11-07 A | 2018-11-07 A | 201 | 100% |  |  | 陈; 程; 邓; 诸葛; 庄 | 1h | 1h | 陈伟峰 | 第六周绩效考评 | 20181028评分 |  |
| 203 | 1.5.18 | 第八次小组会议 | manual | 1d | 2018-11-14 A | 2018-11-14 A | 201, 202 | 100% |  |  | 陈; 程; 邓; 诸葛; 庄 | 1.5h | 1.5h | 陈伟峰 | 第八次小组会议 | PRD2018-G14-1114会议记录 |  |
| 204 | 1.5.19 | 第七周绩效考评 | manual | 1d | 2018-11-14 A | 2018-11-14 A | 203 | 100% |  |  | 陈; 程; 邓; 诸葛; 庄 | 1.5h | 1.5h | 陈伟峰 | 第七周绩效考评 | 20181104评分 |  |
| 205 | 1.5.20 | 第九次小组会议 | manual | 1d | 2018-11-21 A | 2018-11-21 A | 203, 204 | 100% |  |  | 陈; 程; 邓; 诸葛; 庄 | 1.5h | 1.5h | 陈伟峰 | 第九次小组会议 | PRD2018-G14-1121会议记录 |  |
| 206 | 1.5.21 | 第八周绩效考评 | manual | 1d | 2018-11-21 A | 2018-11-21 A | 205 | 100% |  |  | 陈; 程; 邓; 诸葛; 庄 | 1.5h | 1.5h | 陈伟峰 | 第八周绩效考评 | 20181111评分 |  |
| 207 | 1.5.22 | 第十次小组会议 | manual | 1d | 2018-11-28 A | 2018-11-28 A | 205, 206 | 100% |  |  | 陈; 程; 邓; 诸葛; 庄 | 1.5h | 1.5h | 陈伟峰 | 第十次小组会议 | PRD2018-G14-1128会议记录 |  |
| 208 | 1.5.23 | 第九周绩效考评 | manual | 1d | 2018-11-28 A | 2018-11-28 A | 207 | 100% |  |  | 陈; 程; 邓; 诸葛; 庄 | 1.5h | 1.5h | 陈伟峰 | 第九周绩效考评 | 20181118评分 |  |
| 209 | 1.5.24 | 第一次里程碑评审 | manual | 1d | 2018-11-30 A | 2018-11-30 A |  | 100% |  |  | 陈; 程; 邓; 诸葛; 庄 | 1h | 1h | 陈伟峰 | PRD2018-G14-需求工程计划评审 |  |  |
| 210 | 1.5.25 | 第二次临时会议 | manual | 1d | 2018-11-30 A | 2018-11-30 A | 209, 195 | 100% |  |  | 陈; 程; 邓; 诸葛; 庄 | 1.5h | 1.5h | 陈伟峰 | 第二次临时会议 | PRD2018-G14-1130临时会议 |  |
| 211 | 1.5.26 | 第十一次小组会议 | manual | 1d | 2018-12-05 A | 2018-12-05 A | 207, 208 | 100% |  |  | 陈; 程; 邓; 诸葛; 庄 | 1.5h | 1.5h | 陈伟峰 | 第十一次小组会议 | PRD2018-G14-1205会议记录 |  |
| 212 | 1.5.27 | 第十周绩效考评 | manual | 1d | 2018-12-05 A | 2018-12-05 A | 211 | 100% |  |  | 陈; 程; 邓; 诸葛; 庄 | 1.5h | 1.5h | 陈伟峰 | 第十周绩效考评 | 20181125评分 |  |
| 213 | 1.5.28 | 与杨枨老师进行非正式访谈 | manual | 1d | 2018-12-05 A | 2018-12-05 A | 194, 211 | 100% |  |  | 陈; 程; 邓; 诸葛; 庄 | 1h | 1h | 陈伟峰 | 与杨枨老师进行非正式访谈 | PRD2018-G14-1205访谈记录 |  |
| 214 | 1.5.29 | 会议模板第三次 | manual | 1d | 2018-12-06 A | 2018-12-06 A | 198 | 100% |  |  | 陈 | 5h | 5h | 陈伟峰 | PRD2018-G14-会议记录模板 | PRD2018-G14-会议记录模板 |  |
| 215 | 1.5.30 | 与杨枨老师进行非正式访谈 | manual | 1d | 2018-12-06 A | 2018-12-06 A | 213 | 100% |  |  | 陈; 程; 邓; 诸葛; 庄 | 1h | 1h | 陈伟峰 |  | PRD2018-G14-1206访谈记录 |  |
| 216 | 1.5.31 | 里程碑需求工程重评 | manual | 1d | 2018-12-01 A | 2018-12-01 A | 209 | 100% |  |  | 陈; 程; 邓; 诸葛; 庄 | 1h | 1h | 陈伟峰 | 第一次里程碑需求工程重评 |  |  |
| 217 | 1.5.32 | 第十二次小组会议 | manual | 1d | 2018-12-12 A | 2018-12-12 A | 211, 214, 216 | 100% |  |  | 陈; 程; 邓; 诸葛; 庄 | 1h | 1h | 陈伟峰 | 第十二次小组会议 | PRD2018-G14-1212会议记录 |  |
| 218 | 1.5.33 | 第十一周绩效考评 | manual | 1d | 2018-12-13 A | 2018-12-13 A | 217 | 100% |  |  | 陈; 程; 邓; 诸葛; 庄 | 1h | 1h | 陈伟峰 | 第十一周绩效考评 | 20181205评分 |  |
| 219 | 1.5.34 | 学生代表需求初步获取会议 | manual | 1d | 2018-12-13 A | 2018-12-13 A | 218, 223 | 100% |  |  | 诸葛 | 1h | 1h | 陈伟峰 | 学生代表访谈 | 学生代表需求初步表 | 获取学生代表的需求 |
| 220 | 1.5.35 | 管理员代表需求获取 | manual | 1d | 2018-12-16 A | 2018-12-16 A | 216 | 100% |  |  | 庄 | 0.5h | 0.5h | 陈伟峰 | 管理员代表访谈 | 管理员代表访谈初步表 | 获取管理员代表的需求 |
| 221 | 1.5.36 | 教师代表需求获取 | manual | 1d | 2018-12-17 A | 2018-12-17 A | 215 | 100% |  |  | 邓; 庄 | 1h | 1h | 陈伟峰 | 教师代表需求访谈 | 教师代表需求访谈初步表 | 获取教师代表的需求 |
| 222 | 1.5.37 | 第十三次小组会议 | manual | 1d | 2018-12-19 A | 2018-12-19 A | 217, 218 | 100% |  |  | 陈; 程; 邓; 诸葛; 庄 | 1h | 1h | 陈伟峰 | 第十三次小组会议 | PRD2018-G14-1219会议记录 |  |
| 223 | 1.5.38 | 第十二周绩效考评 | manual | 1d | 2018-12-19 A | 2018-12-19 A | 217 | 100% |  |  | 陈; 程; 邓; 诸葛; 庄 | 1h | 1h | 陈伟峰 | 第十二周绩效考评 | 20181212评分 |  |
| 224 | 1.5.39 | 第十四次小组会议 | manual | 1d | 2018-12-26 A | 2018-12-26 A | 223, 222 | 100% |  |  | 陈; 程; 邓; 诸葛; 庄 | 1h | 1h | 陈伟峰 | 第十四次小组会议 |  |  |
| 225 | 1.5.40 | 与杨枨老师进行教师需求访谈 | manual | 1d | 2018-12-17 A | 2018-12-18 A | 221 | 100% |  |  | 陈; 程; 邓; 诸葛; 庄 | 1h | 1h | 陈伟峰 |  | 教师代表需求访谈表 | 对原型进行初步确认 |

| ID | WBS | Task | Type | Duration | Start | Finish | Predecessors | Total slack | Resources | Work | 负责人 | 说明 | 输入 | 输出 |
| --- | --- | --- | --- | --- | --- | --- | --- | --- | --- | --- | --- | --- | --- | --- |
| 226 | 1.6 | **项目收尾** |  | 9.75d | 2019-01-08 | 2019-01-12 | 121, 185 | 0d |  | 107.5h |  |  |  |  |
| 227 | 1.6.1 | 项目总结 | manual | 2d | 2019-01-08 | 2019-01-08 |  |  | 陈; 程; 邓; 诸葛; 庄 | 20h | 庄毓勋 | 项目最终阶段的总结计划 | 需提交的文件 | 项目总结 |
| 228 | 1.6.2 | 制作最终PPT | manual | 2d | 2019-01-09 | 2019-01-10 | 227 |  | 陈; 程; 邓; 诸葛; 庄 | 57.5h | 庄毓勋 | 制作最终评审PPT | 项目总结 | 评审最终PPT |
| 229 | 1.6.3 | 答辩 | manual | 1d | 2019-01-10 | 2019-01-10 | 228, 227 |  | 陈; 程; 邓; 诸葛; 庄 | 10h | 最终答辩 | 使用最终PPT答辩 | 评审最终PPT |  |
| 230 | 1.6.4 | 配置管理系统信息提交 | manual | 1d | 2019-01-11 | 2019-01-11 | 229, 227 |  | 陈; 程; 邓; 诸葛; 庄 | 10h | 邓晰 |  |  | 配置管理系统信息提交 |
| 231 | 1.6.5 | 散伙饭 | manual | 1d | 2019-01-12 | 2019-01-12 | 230, 229 |  | 陈; 程; 邓; 诸葛; 庄 | 10h | 诸葛志相 | 散伙饭 |  | teambuilding |
